# CBTC Phase 2 (sample)

Schedule from Primavera P6, 2025-01-06 to 2030-08-26, data date 2026-09-14, costs in USD, A marks actual dates.

## Calendars

- Standard 5 Day (lunch 12–13): Mon-Fri 08:00-12:00, 13:00-17:00; Sat-Sun off. Exceptions (off unless hours are given): 2026-11-26, 2026-12-24 08:00-12:00, 2026-12-25.
- Four Tens: Mon-Thu 07:00-17:00; Fri-Sun off.

## Resources

| Resource | Group |
| --- | --- |
| Electrician | labor |
| Mobile crane | equipment |
| ATS Test Engineer | labor |
| IXL Test Engineer | labor |

## Schedule

| ID | WBS | Activity | Type | Duration | Start | Finish | Predecessors | Complete | Remaining | Total float | Free float | Constraint | Calendar | Resources | Cost | Responsible | Test procedure | Readiness date | Test cases | Area |
| --- | --- | --- | --- | --- | --- | --- | --- | --- | --- | --- | --- | --- | --- | --- | --- | --- | --- | --- | --- | --- |
|  | CN | **Construction** |  |  | 2025-01-06 | 2026-10-23 |  |  |  |  |  |  |  |  |  |  |  |  |  |  |
| 0-P2-CN-A10-FA-0010 |  | A10 – Cable trough install |  | 30d | 2025-01-06 A | 2025-02-14 A | 0-P2-MS-0005 | 100% |  |  |  |  |  |  |  |  |  |  |  |  |
| 0-P2-CN-B20-FA-0010 |  | B20 – Equipment room fit-out |  | 60d | 2026-08-03 A | 2026-10-23 |  | 50% | 30d | 0d |  |  |  | Electrician [600 h] | 60,000 | CONT |  |  |  |  |
| 0-P2-CN-B20-FA-0020 |  | B20 – Signal cable pull |  | 15d | 2026-09-21 | 2026-10-09 | 0-P2-CN-B20-FA-0010 SS |  |  | 10d | 0d |  |  | Electrician [240 h]; Mobile crane [24 h] | 26,400 | CONT |  |  |  |  |
|  | IN | **Installation** |  |  | 2025-02-17 | 2026-10-30 |  |  |  |  |  |  |  |  |  |  |  |  |  |  |
| 0-P2-IN-A10-FA-0010 |  | A10 – Wayside equipment install |  | 10d | 2025-02-17 A | 2025-02-28 A | 0-P2-CN-A10-FA-0010 | 100% |  |  |  |  |  |  |  |  |  |  |  |  |
| 0-P2-IN-B20-FA-0020 |  | B20 – Antenna install |  | 5d | 2026-09-07 | 2026-09-11 |  |  |  | 15d | 0d |  |  |  |  |  |  |  |  |  |
| 0-P2-IN-C30-FA-0010 |  | C30 – Radio install |  | 5d | 2026-09-28 | 2026-10-02 | 0-P2-CN-B20-FA-0010 FS+1d |  |  | -5d | 0d | start on 2026-09-28 |  |  |  | CONT |  |  |  |  |
| 0-P2-IN-B20-FA-0010 |  | B20 – Zone controller install |  | 5d | 2026-10-26 | 2026-10-30 | 0-P2-CN-B20-FA-0010 |  |  | 0d |  |  |  |  |  | CONT |  |  |  |  |
|  | TC | **Testing & Commissioning** |  |  | 2025-03-03 | 2027-03-26 |  |  |  |  |  |  |  |  |  |  |  |  |  |  |
|  | A10 | **A10 – Alpha Station** |  |  | 2025-03-03 | 2026-11-20 |  |  |  |  |  |  |  |  |  |  |  |  |  |  |
| 0-P2-TC-A10-FA-0010 |  | [T&C] A10 (Ph2) - Core Network Test |  | 12d | 2025-03-03 A | 2025-03-18 A | 0-P2-IN-A10-FA-0010 | 100% |  |  |  |  |  |  |  |  |  |  |  |  |
| 0-P2-TC-A10-FA-0020 |  | [T&C] A10 (Ph2) - Wayside SAT/SIT |  | 15d | 2025-04-01 A | 2025-04-21 A | 0-P2-TC-A10-FA-0010 | 100% |  |  |  |  |  |  |  |  |  |  |  |  |
| 0-P2-TC-A10-FA-0030 |  | [T&C] A10 (Ph2) - Pre-Simulation Test |  | 10d | 2026-08-18 A | 2026-09-25 | 0-P2-TC-A10-FA-0020 | 60% | 4d | 2d | 0d |  |  | ATS Test Engineer [160 h] | 16,000 | HRS |  |  |  |  |
| 0-P2-TC-A10-FA-0050 |  | [T&C] A10 (Ph2) - Regression Test |  | 10d | 2026-09-08 A | 2026-11-20 | 0-P2-TC-A10-FA-0040 | 20% | 8d | 50d | 0d |  |  |  |  |  |  |  |  |  |
| 0-P2-TC-A10-FA-0040 |  | [T&C] A10 (Ph2) - Sim Mode Test (Adjacent Location) (DF: A10 -> B20) |  | 5d | 2026-09-28 | 2026-10-02 | 0-P2-TC-A10-FA-0030 |  |  | 2d | 0d |  |  | ATS Test Engineer [80 h]; IXL Test Engineer [40 h] | 12,000 |  |  |  |  |  |
|  | B20 | **B20 – Bravo Yard** |  |  | 2026-09-21 | 2027-03-26 |  |  |  |  |  |  |  |  |  |  |  |  |  |  |
| 0-P2-TC-B20-FA-0050 |  | [T&C] B20 (Ph2) - Wiring Prep (By Others) |  | 10d | 2026-09-21 | 2026-10-02 |  |  |  | 75d | 0d |  |  |  |  |  |  |  |  |  |
| 0-P2-TC-B20-FA-0010 |  | [T&C] B20 (Ph2) - Core Network Test |  | 12d | 2026-11-02 | 2026-11-17 | 0-P2-IN-B20-FA-0010 |  |  | 0d |  |  |  | ATS Test Engineer [192 h] | 19,200 | HRS | TP-B20-001 rev C | 2026-10-30 | 42 | NORTH |
| 0-P2-TC-B20-FA-0040 |  | [T&C] B20 (Ph2) - Long Hammock Support | level of effort | 70d | 2026-11-02 | 2027-02-05 | 0-P2-TC-B20-FA-0010 SS |  |  | 0d |  |  |  |  |  |  |  |  |  |  |
| 0-P2-TC-B20-FA-0020 |  | [T&C] B20 (Ph2) - Wayside SAT/SIT |  | 15d | 2027-02-01 | 2027-02-19 | 0-P2-TC-B20-FA-0010 |  |  | 5d | 0d |  |  | IXL Test Engineer [240 h] | 24,000 | HRS |  |  |  |  |
| 0-P2-TC-B20-FA-0030 |  | [T&C] B20 (Ph2) - Cutover (By BART) |  | 20d | 2027-03-01 | 2027-03-26 | 0-P2-TC-B20-FA-0020 |  |  | 5d | 0d | start on or after 2027-03-01 |  |  |  | BART |  |  |  |  |
|  | C30 | **C30 – Charlie Junction** |  |  | 2026-10-05 | 2026-10-08 |  |  |  |  |  |  |  |  |  |  |  |  |  |  |
| 0-P2-TC-C30-FA-0010 |  | [T&C] C30 (Ph2) - Radio Test |  | 4d | 2026-10-05 | 2026-10-08 | 0-P2-IN-C30-FA-0010, 0-P2-CN-B20-FA-0020 SS-2d |  |  | -4d | 0d |  | Four Tens | T&C Lead [40 h] | 4,000 |  |  |  |  |  |

Notes:
- 0-P2-TC-B20-FA-0010: Scope: Core network test for B20 – needs 2 nights. / Zone controller installed first / Access: nights & weekends only

| ID | WBS | Activity | Type | Duration | Start | Finish | Predecessors | Complete | Total float | Free float |
| --- | --- | --- | --- | --- | --- | --- | --- | --- | --- | --- |
|  | MS | **Milestones** |  |  | 2025-01-06 | 2030-08-26 |  |  |  |  |
| 0-P2-MS-0005 |  | Phase 2 start | milestone | 0d | 2025-01-06 A | 2025-01-06 A |  | 100% |  |  |
| 0-P2-MS-0010 |  | [MS] - Program Milestone | milestone | 0d | 2030-08-26 | 2030-08-26 | 0-P2-TC-B20-FA-0030, 0-P2-TC-B20-FA-0050 SF |  | 5d | 0d |

## Activity codes

| Code | Value | Meaning |
| --- | --- | --- |
| Area | NORTH | North section |
| Responsible | BART | BART forces |
| Responsible | CONT | Civil contractor |
| Responsible | HRS | Hitachi Rail |

# CBTC Phase 2 – Baseline 1

Schedule from Primavera P6, 2025-03-03 to 2026-12-18, data date 2025-01-06.

## Calendars

- Standard 5 Day (lunch 12–13): Mon-Fri 08:00-12:00, 13:00-17:00; Sat-Sun off. Exceptions (off unless hours are given): 2026-11-26.

## Schedule

| ID | WBS | Activity | Duration | Start | Finish | Total float |
| --- | --- | --- | --- | --- | --- | --- |
|  | TC | **Testing & Commissioning** |  | 2025-03-03 | 2026-12-18 |  |
| 0-P2-TC-A10-FA-0010 |  | [T&C] A10 (Ph2) - Core Network Test | 10d | 2025-03-03 | 2025-03-14 | 0d |
| 0-P2-TC-A10-FA-0030 |  | [T&C] A10 (Ph2) - Pre-Simulation Test | 10d | 2026-06-01 | 2026-06-12 | 0d |
| 0-P2-TC-A10-FA-0040 |  | [T&C] A10 (Ph2) - Sim Mode Test (Adjacent Location) (DF: A10 -> B20) | 5d | 2026-06-15 | 2026-06-19 | 0d |
| 0-P2-TC-B20-FA-0010 |  | [T&C] B20 (Ph2) - Core Network Test | 10d | 2026-08-03 | 2026-08-14 | 0d |
| 0-P2-TC-B20-FA-0020 |  | [T&C] B20 (Ph2) - Wayside SAT/SIT | 15d | 2026-12-01 | 2026-12-18 | 0d |
